# Johnstown - Routine Maintenance Work

Schedule from Primavera P6, 2011-05-18 to 2011-07-12, data date 2002-09-10, costs in USD.

## Calendars

- 7x24: Mon-Sun 01:00-12:00, 13:00-00:00. Exceptions (off unless hours are given): 2011-05-30, 2011-07-04.

## Resources

| Resource | Group | Rate | Notes |
| --- | --- | --- | --- |
| Instrumentation Engineer | labor | 73 | ï»¿ |
| Operations Test Group | labor | 80 | ï»¿ |
| Hydroblaster | labor | 90 | ï»¿ |
| Field Engineer | labor | 77 | ï»¿ |
| Electrician | labor | 95 | ï»¿ |

## Schedule

| ID | WBS | Activity | Duration | Start | Finish | Predecessors | Total float | Free float | Resources | Cost | Responsibility | Crew | Subs | Threatening Priority | Action | Status | Mode | Outage | PPES Support | Crane Use |
| --- | --- | --- | --- | --- | --- | --- | --- | --- | --- | --- | --- | --- | --- | --- | --- | --- | --- | --- | --- | --- |
|  | FO | **Forced Outage** |  | 2011-05-18 08:00 | 2011-07-12 09:12 |  |  |  |  |  |  |  |  |  |  |  |  |  |  |  |
|  | PSD | **Plant Shutdown** |  | 2011-05-18 08:00 | 2011-06-07 10:00 |  |  |  |  |  |  |  |  |  |  |  |  |  |  |  |
| FO10005 |  | DECREASE GENERATOR LOAD TO 100 MW | 1.2d | 2011-05-18 08:00 | 2011-05-19 09:36 |  | 10.8d | 0d | Instrumentation Engineer [9.6 h] | 700.8 | I210 | OP001 | 0999 | 0A | - | - | ----- | 5 | ---- | - |
| FO40003 |  | DEPRESSURIZE RCS TO 800 PSIG | 0.15d | 2011-05-18 08:00 | 2011-05-18 09:12 |  | 0d |  | Operations Test Group [1.2 h] | 96 | I210 | OP001 | 0999 | 0A | - | - | ----- | 5 | ---- | - |
| FO30010 |  | COOLDOWN RCS TO LESS THAN 350 DEGREES (MODE 4) | 0.15d | 2011-05-18 09:12 | 2011-05-18 10:24 | FO40003 | 0d |  | Instrumentation Engineer [1.2 h] | 87.6 | I210 | OP001 | 0999 | 0A | - | - | ----- | 5 | ---- | - |
| FO30011 |  | ALIGN SAFETY INJECTION SYSTEM FOR OPERATION | 0.2d | 2011-05-18 10:24 | 2011-05-18 12:48 | FO30010 | 5.85d |  | Instrumentation Engineer [2.4 h] | 175.2 | I210 | OP001 | 0999 | 0A | - | - | ----- | 5 | ---- | - |
| FO30012 |  | ESTABLISH N2 TO THE PORVS PER SOP-SI-1 (VIA 34) | 1.2d | 2011-05-18 10:24 | 2011-05-19 12:00 | FO30010 | 0d |  | Operations Test Group [9.6 h] | 768 | I210 | OP001 | 0999 | 0A | - | - | ----- | 5 | ---- | - |
| FO10007 |  | DECREASE GEN LOAD TO 40 MW; XFER HOUSE LOADS | 2.3d | 2011-05-19 09:36 | 2011-05-23 12:48 | FO10005 | 10.8d | 0d | Operations Test Group [19.2 h] | 1,536 | I210 | OP001 | 0999 | 0A | - | - | ----- | 5 | ---- | - |
| FO40004 |  | PLACE RCS OVER PROJECTION SYSTEM IN SERVICE | 0.03d | 2011-05-19 12:00 | 2011-05-19 13:12 | FO30012 | 0d |  | Instrumentation Engineer [1.2 h] | 87.6 | I210 | OP001 | 0999 | 0A | - | - | ----- | 5 | ---- | - |
| FO40005 |  | DEPRESSURIZE RCS TO 350 PSIG | 1.93d | 2011-05-19 13:12 | 2011-05-23 11:36 | FO40004 | 0d |  | Operations Test Group [14.4 h] | 1,152 | I210 | OP001 | 0999 | 0A | - | - | ----- | 5 | ---- | - |
| FO40006 |  | WARM AND MIX RHR SYSTEM AND CHEMICAL SAMPLE | 2.27d | 2011-05-23 11:36 | 2011-05-25 14:48 | FO40005 | 0d |  | Operations Test Group [19.2 h] | 1,536 | I210 | OP001 | 0999 | 0A | - | - | ----- | 5 | ---- | - |
| FO10008 |  | TRIP GENERATOR, OFF THE GRID | 0.85d | 2011-05-23 12:48 | 2011-05-24 10:48 | FO10007 | 10.8d | 0d | Instrumentation Engineer [6 h] | 438 | I210 | OP001 | 0999 | 0A | - | - | ----- | 5 | ---- | - |
| FO10009 |  | SECURE SECOND CONDENSATE PUMP | 0.55d | 2011-05-23 12:48 | 2011-05-24 08:24 | FO10007 | 18.7d | 1.65d | Operations Test Group [3.6 h] | 288 | I210 | OP001 | 0999 | 0A | - | - | ----- | 5 | ---- | - |
| FO10011 |  | BREAKER OPEN, START THE OUTAGE | 0.15d | 2011-05-24 10:48 | 2011-05-24 12:00 | FO10006, FO10008 | 10.8d | 0d | Operations Test Group [1.2 h] | 96 | I210 | OP001 | 0999 | 0A | - | - | ----- | 5 | ---- | - |
| FO10010 |  | REDUCE REACTOR POWER TO LESS THAN 4% - (MODE 2) | 1.07d | 2011-05-24 12:00 | 2011-05-25 13:36 | FO10011 | 17.05d | 0d | Operations Test Group [9.6 h] | 768 | I210 | OP001 | 0999 | 0A | - | - | ----- | 5 | ---- | - |
| FO20007 |  | PLACE TURBINE GENERATOR ON TURNING GEAR PER | 0.03d | 2011-05-24 12:00 | 2011-05-24 13:12 | FO10011 | 10.8d | 0d | Instrumentation Engineer [1.2 h] | 87.6 | I210 | OP001 | 0999 | 0A | - | - | ----- | 5 | ---- | - |
| FO20010 |  | REPLACE HYDROGEN WITH AIR PER SOP-TG-1 | 0.15d | 2011-05-24 13:12 | 2011-05-24 14:24 | FO20007 | 10.8d | 0d | Instrumentation Engineer [1.2 h] | 87.6 | I210 | OP001 | 0999 | 0A | - | - | ----- | 5 | ---- | - |
| FO20001 |  | SECURE FEEDWTR PUMPS; PLACE AUX FEED INSERVICE | 0.15d | 2011-05-25 13:36 | 2011-05-25 14:48 | FO10010, FO10009 | 17.05d | 0d | Instrumentation Engineer [1.2 h] | 87.6 | I210 | OP001 | 0999 | 0A | - | - | ----- | 5 | ---- | - |
| FO20003 |  | SHUTDOWN MAIN FEEDWATER PUMPS PER SOP-FW-1 | 0.15d | 2011-05-25 14:48 | 2011-05-25 16:00 | FO20001 | 17.05d | 0d | Instrumentation Engineer [1.2 h] | 87.6 | I210 | OP001 | 0999 | 0A | - | - | ----- | 5 | ---- | - |
| FO20004 |  | TRANSFER RCS TEMP CONTROL TO STEAM DUMPS | 0.15d | 2011-05-25 14:48 | 2011-05-25 16:00 | FO20003 SS | 17.05d | 0d | Instrumentation Engineer [1.2 h] | 87.6 | I210 | OP001 | 0999 | 0A | - | - | ----- | 5 | ---- | - |
| FO30014 |  | PLACE RHR IN SERVICE PER SOP-RHR-1 | 0.72d | 2011-05-25 14:48 | 2011-05-26 11:36 | FO40006 | 0d |  | Operations Test Group [4.8 h] | 384 | I210 | OP001 | 0999 | 0A | - | - | ----- | 5 | ---- | - |
| FO20005 |  | CLOSE MAIN STEAM ISOLATION VALVES (MSIVS) | 0.15d | 2011-05-26 08:00 | 2011-05-26 09:12 | FO20004 | 17.05d | 0d | Operations Test Group [1.2 h] | 96 | I210 | OP001 | 0999 | 0A | - | - | ----- | 5 | ---- | - |
| FO20006 |  | SECURE CONDENSER AIR REMOVAL SYS, BREAK VACUUM | 0.15d | 2011-05-26 09:12 | 2011-05-26 10:24 | FO20005 | 25.43d | 22.88d | Operations Test Group [1.2 h] | 96 | I210 | OP001 | 0999 | 0A | - | - | ----- | 5 | ---- | - |
| FO30001 |  | INSERT CONTROL BANK RODS | 0.9d | 2011-05-26 09:12 | 2011-05-27 08:24 | FO20004, FO20005 | 17.05d | 0d | Operations Test Group [7.2 h] | 576 | I210 | OP001 | 0999 | 0A | - | - | ----- | 5 | ---- | - |
| FO30015 |  | COOLDOWN RCS TO LESS THAN 200 DEGREES (MODE 5) | 1.8d | 2011-05-26 11:36 | 2011-05-30 10:00 | FO30011, FO30014 | 0d |  | Operations Test Group [14.4 h] | 1,152 | I210 | OP001 | 0999 | 0A | - | - | ----- | 5 | ---- | - |
| FO30002 |  | INSERT SHUTDOWN BANK RODS (MODE 3 ENTRY) | 0.78d | 2011-05-27 08:24 | 2011-05-27 15:36 | FO30001 | 17.05d | 0d | Operations Test Group [7.2 h] | 576 | I210 | OP001 | 0999 | 0A | - | - | ----- | 5 | ---- | - |
| FO30003 |  | ADJUST BORON CONCENTRATION TO HSD XENON FREE | 0.47d | 2011-05-27 08:24 | 2011-05-27 13:12 | FO30002 SS | 31.5d | 0.9d | Operations Test Group [4.8 h] | 384 | I210 | OP001 | 0999 | 0A | - | - | ----- | 5 | ---- | - |
| FO30004 |  | SHUTDOWN ROD DRIVE MG SETS AS PER SOP-RC-2 | 0.42d | 2011-05-27 15:36 | 2011-05-30 10:00 | FO30002 | 17.05d | 0d | Operations Test Group [2.4 h] | 192 | I210 | OP001 | 0999 | 0A | - | - | ----- | 5 | ---- | - |
| FO30005 |  | BORATE TO COLD SHUT DOWN CONCENTRATION | 0.42d | 2011-05-27 15:36 | 2011-05-30 10:00 | FO30002, FO30003 SS | 30.9d |  | Operations Test Group [2.4 h] | 192 | I210 | OP001 | 0999 | 0A | - | - | ----- | 5 | ---- | - |
| FO40001 |  | DEPRESSURIZE RCS TO APPROX 1700 PSI | 0.25d | 2011-05-30 10:00 | 2011-05-30 12:24 | FO30004 | 30.6d |  | Operations Test Group [2.4 h] | 192 | I210 | OP001 | 0999 | 0A | - | - | ----- | 5 | ---- | - |
| FO40007 |  | COOLDOWN RCS TO 190 TO 180 DEGREES | 6d | 2011-05-30 10:00 | 2011-06-07 10:00 | FO30015 | 0d |  | Operations Test Group [48 h] | 3,840 | I210 | OP001 | 0999 | 0A | - | - | ----- | 5 | ---- | - |

Notes:
- FO10005: Steps: Refer to Op Manual for detailed Procedure

| ID | WBS | Activity | Duration | Start | Finish | Predecessors | Total float | Free float | Calendar | Resources | Cost | Responsibility | Crew | Subs | Threatening Priority | Action | Status | Mode | Outage | PPES Support | Crane Use |
| --- | --- | --- | --- | --- | --- | --- | --- | --- | --- | --- | --- | --- | --- | --- | --- | --- | --- | --- | --- | --- | --- |
|  | CVC | **Chemical and Volume Control** |  | 2011-05-18 08:00 | 2011-05-18 09:12 |  |  |  |  |  |  |  |  |  |  |  |  |  |  |  |  |
| OPS980010H |  | HANG SAFETY TAG (PTO) FOR CH-MOV-250B WORK | 0.15d | 2011-05-18 08:00 | 2011-05-18 09:12 |  | 39d |  |  | Operations Test Group [1.2 h] | 96 | I210 | OP001 | 0034 | -- | - | - | ----- | 5 | ---- | - |
| OPS980010R |  | REMOVE SAFETY TAG (PTO) FOR CH-MOV-250B | 0.15d | 2011-05-18 08:00 | 2011-05-18 09:12 |  | 39d |  |  | Operations Test Group [1.2 h] | 96 | I210 | OP001 | 0034 | -- | - | - | ----- | 5 | ---- | - |
| OPS980011H |  | HANG SAFETY TAG (PTO) FOR CH-MOV-250D (BLUE) | 0.15d | 2011-05-18 08:00 | 2011-05-18 09:12 |  | 39d |  |  | Operations Test Group [1.2 h] | 96 | I210 | OP001 | 0034 | -- | - | - | ----- | 5 | ---- | - |
| OPS980011R |  | REMOVE SAFETY TAG (PTO) FOR MOV-250 | 0.05d | 2011-05-18 08:00 | 2011-05-18 09:12 |  | 20d |  | 7x24 | Operations Test Group [1.2 h] | 96 | VENDR |  |  |  |  |  |  |  |  |  |
| OPS980029H |  | HANG SAFETY TAG (PTO) FOR CH-107 | 0.15d | 2011-05-18 08:00 | 2011-05-18 09:12 |  | 14.85d | 0d |  | Operations Test Group [1.2 h] | 96 | I210 | OP001 | 0034 | -- | - | - | ----- | 5 | ---- | - |
| OPS980029R |  | REMOVE SAFETY TAG (PTO) FOR CH-107 | 0.15d | 2011-05-18 08:00 | 2011-05-18 09:12 |  | 39d |  |  | Operations Test Group [1.2 h] | 96 | I210 | OP001 | 0034 | -- | - | - | ----- | 5 | ---- | - |
|  | PS | **Power Systems** |  | 2011-05-18 08:00 | 2011-05-27 14:24 |  |  |  |  |  |  |  |  |  |  |  |  |  |  |  |  |
|  | 138KV | **138 KV** |  | 2011-05-18 09:12 | 2011-05-18 10:24 |  |  |  |  |  |  |  |  |  |  |  |  |  |  |  |  |
| FO10006 |  | AT APPROX 350 MW SHUT DOWN 31 HDP | 0.15d | 2011-05-18 09:12 | 2011-05-18 10:24 | OPS980029H | 14.85d | 4.05d |  | Instrumentation Engineer [1.2 h] | 87.6 | I210 | OP001 | 0038 | 0A | - | - | ----- | 5 | ---- | - |
|  | 69KV | **69 KV** |  | 2011-05-18 08:00 | 2011-05-27 14:24 |  |  |  |  |  |  |  |  |  |  |  |  |  |  |  |  |
| 70172304ZZ |  | PM 52/RCP31, TRIP CHECKS FOR BREAKERS | 0.3d | 2011-05-18 08:00 | 2011-05-18 10:24 |  | 28.73d | 0d |  | Instrumentation Engineer [2.4 h] | 350.4 | I410 | IC001 | 0043 | 0A | G | R | ZCSD | 5 | Y--- | - |
| 70172404ZZ |  | PM 52/RCP32, TRIP CHECKS FOR BREAKERS | 0.2d | 2011-05-18 10:24 | 2011-05-18 12:48 | 70172304ZZ | 28.73d | 0d |  | Instrumentation Engineer [2.4 h] | 350.4 | I410 | IC001 | 0043 | 0A | G | R | ZCSD | 5 | Y--- | - |
| 70172604ZZ |  | PM 52/RCP33, TRIP CHECKS FOR BREAKERS | 0.28d | 2011-05-18 12:48 | 2011-05-18 15:12 | 70172404ZZ | 28.73d | 0d |  | Instrumentation Engineer [2.4 h] | 350.4 | I410 | IC001 | 0043 | 0A | G | R | ZCSD | 5 | Y--- | - |
| 70174304ZZ |  | PM 52/RCP34, TRIP CHECKS FOR BREAKERS | 0.28d | 2011-05-18 15:12 | 2011-05-19 08:24 | 70172604ZZ | 28.73d | 5.1d |  | Instrumentation Engineer [1.2 h] | 175.2 | I410 | IC001 | 0043 | 0A | G | R | ZCSD | 5 | Y--- | - |
| 70174804ZZ |  | PM 52/CP31, TRIP CHECKS FOR BREAKERS | 0.9d | 2011-05-26 09:12 | 2011-05-27 08:24 | FO20005, 70174304ZZ | 23.62d | 0d |  | Instrumentation Engineer [7.2 h] | 1,051.2 | I410 | IC001 | 0043 | 0A | G | R | ZRXCR | 5 | Y--- | - |
| 70174904ZZ |  | PM 52/CP32, TRIP CHECKS FOR BREAKERS | 0.15d | 2011-05-27 08:24 | 2011-05-27 09:36 | 70174804ZZ | 23.62d | 0d |  | Instrumentation Engineer [1.2 h] | 175.2 | I410 | IC001 | 0043 | 0A | G | R | ZRXCR | 5 | Y--- | - |
| 70175004ZZ |  | PM 52/CP33, TRIP CHECKS FOR BREAKERS | 0.3d | 2011-05-27 09:36 | 2011-05-27 12:00 | 70174904ZZ | 23.62d | 0d |  | Instrumentation Engineer [2.4 h] | 350.4 | I410 | IC001 | 0043 | 0B | G | R | ZRXCR | 5 | Y--- | - |
| 70175204ZZ |  | PM 52/HDP31, TRIP CHECKS FOR BREAKERS | 0.03d | 2011-05-27 12:00 | 2011-05-27 13:12 | 70175004ZZ | 23.62d | 0d |  | Instrumentation Engineer [1.2 h] | 87.6 | I410 | IC001 | 0043 | 0A | G | R | ZRXCR | 5 | Y--- | - |
| 70175504ZZ |  | PM 52/HDP32, TRIP CHECKS FOR BREAKERS | 0.15d | 2011-05-27 13:12 | 2011-05-27 14:24 | 70175204ZZ | 23.62d | 0d |  | Instrumentation Engineer [1.2 h] | 87.6 | I410 | IC001 | 0043 | 0A | G | R | ZRXCR | 5 | Y--- | - |
|  | IB | **Instrument Bus** |  | 2011-05-18 08:00 | 2011-05-30 11:12 |  |  |  |  |  |  |  |  |  |  |  |  |  |  |  |  |
| OPS980031R |  | REMOVE SAFETY TAG (PTO) FOR 33 INVERTER WORK | 0.15d | 2011-05-18 08:00 | 2011-05-18 09:12 |  | 13.8d | 3.45d |  | Instrumentation Engineer [1.2 h] | 87.6 | I210 | OP001 | 0045 | -- | - | - | ----- | 5 | ---- | - |
| OPS980031H |  | HANG SAFETY TAG (PTO) FOR 33 INVERTER WORK | 0.15d | 2011-05-30 10:00 | 2011-05-30 11:12 | FO30015, OPS980031R | 30.75d |  |  | Operations Test Group [1.2 h] | 96 | I210 | OP001 | 0045 | -- | - | - | ----- | 5 | ---- | - |
|  | FW | **Feedwater** |  | 2011-05-18 08:00 | 2011-05-27 15:36 |  |  |  |  |  |  |  |  |  |  |  |  |  |  |  |  |
|  | MFPS | **Main Feedwater Pump and Service** |  | 2011-05-18 08:00 | 2011-05-27 15:36 |  |  |  |  |  |  |  |  |  |  |  |  |  |  |  |  |
| OPS980027R |  | REMOVE SAFETY TAG (PTO) FOR #31 MBFP MAIN OIL | 0.15d | 2011-05-18 08:00 | 2011-05-18 09:12 |  | 39d |  |  | Operations Test Group [1.2 h] | 96 | I210 | OP001 | 0076 | -- | - | - | ----- | 5 | ---- | - |
| OPS980027H |  | HANG SAFETY TAG (PTO) FOR MBFP MAIN OIL PUMP | 0.15d | 2011-05-27 14:24 | 2011-05-27 15:36 | 70175504ZZ, FO20001 | 31.2d |  |  | Operations Test Group [1.2 h] | 96 | I210 | OP001 | 0076 | -- | - | - | ----- | 5 | ---- | - |

| ID | WBS | Activity | Duration | Start | Finish | Predecessors | Total float | Free float | Calendar | Resources | Cost | Responsibility | Crew | Subs | Threatening Priority | Action | Status | Mode | Outage | PPES Support | Crane Use |
| --- | --- | --- | --- | --- | --- | --- | --- | --- | --- | --- | --- | --- | --- | --- | --- | --- | --- | --- | --- | --- | --- |
|  | MF | **Main Feedwater** |  | 2011-05-18 08:00 | 2011-05-26 14:00 |  |  |  |  |  |  |  |  |  |  |  |  |  |  |  |  |
| OPS980003R |  | REMOVE SAFETY TAG (PTO'S) FOR FEED REG VALVE | 0.15d | 2011-05-18 08:00 | 2011-05-18 09:12 |  | 25d | 0d |  | Operations Test Group [1.2 h] | 96 | I210 | OP001 | 0077 | -- | - | - | ----- | 5 | ---- | - |
| 80162501ZZ |  | POST WORK TEST AFTER REPACK ON VALVE BFD-FCV-437 | 0.35d | 2011-05-18 09:12 | 2011-05-18 12:48 | OPS980003R | 25d |  |  | Operations Test Group [3.6 h] | 288 | I210 | OPTG1 | 0077 | 0A | T | I | ZCSD | 5 | ---- | - |
| OPS980003H |  | HANG SAFETY TAG (PTO'S) FOR FEED REG VALVE | 0.9d | 2011-05-25 14:48 | 2011-05-26 14:00 | FO20001 | 32.4d |  |  | Operations Test Group [7.2 h] | 576 | I210 | OP001 | 0077 | -- | - | - | ----- | 5 | ---- | - |
|  | HD | **Heater Drain, MSR Drains/Vents** |  | 2011-05-18 08:00 | 2011-05-27 15:36 |  |  |  |  |  |  |  |  |  |  |  |  |  |  |  |  |
| 80052700ZZ |  | REPAIR BODY TO BONNET LEAK FOR FCV-1204 | 3.5d | 2011-05-18 08:00 | 2011-05-23 12:48 |  | 31.2d | 0d | 2S,7-19 | Instrumentation Engineer [28.8 h]; Hydroblaster [28.8 h] | 4,694.4 | I310 | MM001 | 0083 | 0A | A | I | ZMSIV | 5 | Y--- | - |
| 70566300ZZ |  | PM LCV-1127C, HEATER DRAIN TANK BYPASS TO | 2.38d | 2011-05-23 12:48 | 2011-05-25 16:00 | 80052700ZZ | 31.2d | 0d |  | Instrumentation Engineer [19.2 h] | 1,401.6 | I310 | MM001 | 0083 | 0B | G | H | ZMCVC | 5 | Y--- | - |
| 70565401ZZ |  | POST WORK TEST AFTER LCV-1124 (AO) CALIBRATION | 0.78d | 2011-05-26 08:00 | 2011-05-26 15:12 | 70566300ZZ | 31.2d | 0d |  | Instrumentation Engineer [7.2 h] | 525.6 | I410 | IC001 | 0083 | 0A | T | H | ZMSIV | 5 | ---- | - |
| 70554101ZZ |  | POST WORK TEST ON 2HD-LCV-1138, STROKE AND ISLT | 0.72d | 2011-05-26 15:12 | 2011-05-27 12:00 | 70565401ZZ | 31.2d | 0d |  | Operations Test Group [4.8 h] | 384 | I210 | OPTG1 | 0083 | 0A | T | I | ----- | 5 | Y--- | - |
| 70554100ZZ |  | PM 2HD-LCV-1138, 32A FWH TO 33 CONDENSER HI-HI | 0.33d | 2011-05-27 12:00 | 2011-05-27 15:36 | 70554101ZZ | 31.2d |  | 2S,7-19 | Operations Test Group [3.6 h] | 288 | I310 | MM001 | 0083 | 0B | G | S | ----- | 5 | Y--- | - |
|  | Steam | **Steam** |  | 2011-05-18 08:00 | 2011-06-03 12:48 |  |  |  |  |  |  |  |  |  |  |  |  |  |  |  |  |
|  | MS | **Main Steam** |  | 2011-06-02 11:12 | 2011-06-03 12:48 |  |  |  |  |  |  |  |  |  |  |  |  |  |  |  |  |
| 02389805ZZ |  | PERFORM HYDRO TEST ON MAIN STEAM TRAP STATION | 1.1d | 2011-06-02 11:12 | 2011-06-03 12:48 | 80052700ZZ, 60772900ZZ | 26.55d |  |  | Operations Test Group [9.6 h]; Field Engineer [9.6 h] | 1,507.2 | I210 | OPTG1 | 0108 | 0B | Y | R | ZCSD | 5 | Y--- | - |
|  | ES | **Extraction Steam** |  | 2011-05-18 08:00 | 2011-05-23 12:48 |  |  |  |  |  |  |  |  |  |  |  |  |  |  |  |  |
| 80049200ZZ |  | REPAIR LARGE INTERNAL LEAK FOR VALVE FCV-1159 | 3.5d | 2011-05-18 08:00 | 2011-05-23 12:48 |  | 26.55d | 0d | 2S,7-19 | Instrumentation Engineer [28.8 h]; Hydroblaster [28.8 h] | 4,694.4 | I310 | MM001 | 0109 | 0A | A | I | ZMCVC | 5 | Y--- | - |
|  | LPS | **Low Pressure Steam Dump** |  | 2011-05-23 12:48 | 2011-06-02 11:12 |  |  |  |  |  |  |  |  |  |  |  |  |  |  |  |  |
| 60788903ZZ |  | INSPECT / REPAIR SUSPECTED LEAK BY ON VALVE | 0.55d | 2011-05-23 12:48 | 2011-05-24 08:24 | 80049200ZZ | 26.55d | 0d |  | Operations Test Group [3.6 h] | 288 | I310 | MMFL1 | 0112 | 0A | A | R | ZMSIV | 5 | Y--- | - |
| 60788901ZZ |  | RETEST FCV-1206 VALVE FOR SEAT LEAK | 1.2d | 2011-05-24 08:24 | 2011-05-25 10:00 | 60788903ZZ | 26.55d | 0d |  | Instrumentation Engineer [9.6 h] | 700.8 | I210 | OPTG1 | 0112 | 0A | T | I | ZTBSY | 5 | N--- | - |
| 60788900ZZ |  | REPAIR INTERNAL LEAK FOR VALVE 5EX-FCV-1206 | 3.48d | 2011-05-25 10:00 | 2011-05-30 14:48 | 60788901ZZ | 26.55d | 0d | 2S,7-19 | Operations Test Group [28.8 h]; Hydroblaster [28.8 h] | 4,896 | I310 | MMBP1 | 0112 | 0A | A | I | ZMSIV | 5 | Y--- | - |
| 60788902ZZ |  | RETEST FOR FCV-1210 VALVE SEAT LEAK | 0.15d | 2011-05-30 14:48 | 2011-05-30 16:00 | 60788900ZZ | 26.55d | 0d |  | Operations Test Group [1.2 h]; Field Engineer [1.2 h] | 188.4 | I210 | OPTG1 | 0112 | 0A | T | I | ZTBSY | 5 | N--- | - |
| 60772900ZZ |  | REPLACE VALVE 5EX-FCV-1210, LEAKS BY SEAT | 2.4d | 2011-05-31 08:00 | 2011-06-02 11:12 | 60788902ZZ | 26.55d | 0d |  | Operations Test Group [19.2 h]; Field Engineer [19.2 h] | 3,014.4 | I310 | MMJA1 | 0112 | 0A | A | I | ZMSIV | 5 | Y--- | - |
|  | MT | **Main Turbine** |  | 2011-07-01 15:24 | 2011-07-05 09:00 |  |  |  |  |  |  |  |  |  |  |  |  |  |  |  |  |
| FO60017 |  | ROLL THE TURBINE GENERATOR | 1.32d | 2011-07-01 15:24 | 2011-07-05 09:00 | FO20007, FO60016, FO20006A, FO60007, FO60010 | 0d |  |  | Operations Test Group [9.6 h] | 768 | I210 | OP001 | 0114 | 0A | - | - | ----- | 5 | ---- | - |
|  | Reactor | **Reactor** |  | 2011-05-18 08:00 | 2011-07-11 15:24 |  |  |  |  |  |  |  |  |  |  |  |  |  |  |  |  |
|  | RCD | **Rod Control Drive** |  | 2011-07-05 09:00 | 2011-07-11 15:24 |  |  |  |  |  |  |  |  |  |  |  |  |  |  |  |  |
| 70639802ZZ |  | PM ROD CLUSTER CONTROL - CONTROL ROD DRIVE | 4.67d | 2011-07-05 09:00 | 2011-07-11 15:24 | FO60017, 80161700ZZ | 0.23d |  |  | Instrumentation Engineer [9.6 h] | 700.8 | I410 | ICJB1 | 0130 | 0A | E | I | ZCSD | 5 | YY-- | - |

| ID | WBS | Activity | Duration | Start | Finish | Predecessors | Total float | Free float | Calendar | Resources | Cost | Responsibility | Crew | Subs | Threatening Priority | Action | Status | Mode | Outage | PPES Support | Crane Use |
| --- | --- | --- | --- | --- | --- | --- | --- | --- | --- | --- | --- | --- | --- | --- | --- | --- | --- | --- | --- | --- | --- |
|  | RC | **Reactor Coolent** |  | 2011-05-18 08:00 | 2011-05-20 11:12 |  |  |  |  |  |  |  |  |  |  |  |  |  |  |  |  |
| 80216900ZZ |  | TROUBLESHOOT 31 RCP SP-2-1, HIGH VIBRATION ALARM | 2.4d | 2011-05-18 08:00 | 2011-05-20 11:12 |  | 10.35d | 0d |  | Instrumentation Engineer [19.2 h] | 1,401.6 | I410 | IC001 | 0132 | 0B | A | H | ZCSD | 5 | Y--- | - |
|  | P | **Pressurizer** |  | 2011-05-20 11:12 | 2011-05-23 14:00 |  |  |  |  |  |  |  |  |  |  |  |  |  |  |  |  |
| 80161701ZZ |  | POST WORK TEST 3PT-Q32 FOR RC-AOV-549-33/O | 1.1d | 2011-05-20 11:12 | 2011-05-23 12:48 | 80216900ZZ | 10.35d | 0d |  | Instrumentation Engineer [9.6 h] | 700.8 | I210 | OPTG1 | 0136 | 0A | T | I | ZCSD | 5 | ---- | - |
| 80161700ZZ |  | ADJUST LIMIT SWITCH ON RC-AOV-549-33/O | 0.12d | 2011-05-23 12:48 | 2011-05-23 14:00 | 80161701ZZ | 21.85d |  |  | Instrumentation Engineer [1.2 h] | 87.6 | I510 | EM001 | 0136 | 0A | A | R | ZCSD | 5 | YY-- | - |
|  | Gen | **Generator** |  | 2011-05-18 08:00 | 2011-06-29 11:00 |  |  |  |  |  |  |  |  |  |  |  |  |  |  |  |  |
|  | MG | **Main Generator** |  | 2011-05-26 12:48 | 2011-06-29 11:00 |  |  |  |  |  |  |  |  |  |  |  |  |  |  |  |  |
| FO20006B |  | PLACE MAIN TURBINE ON GEAR AFTER OUTAGE WORK | 0.7d | 2011-05-26 12:48 | 2011-05-27 09:36 | FO10017 | 18.4d |  |  | Operations Test Group [4.8 h] | 384 | I210 | OP001 | 0116 | 0A | - | - | ----- | 5 | ---- | - |
| FO20006A |  | REMOVE TURBINE FROM TURNING GEAR | 1.2d | 2011-06-28 09:24 | 2011-06-29 11:00 | FO60010, FO20006, FO20010 | 2.55d |  |  | Operations Test Group [9.6 h] | 768 | I210 | OP001 | 0116 | -- | - | - | ----- | 5 | ---- | - |
|  | GECI | **Generator Excitation, Control & Instrumentation** |  | 2011-05-18 08:00 | 2011-05-24 14:24 |  |  |  |  |  |  |  |  |  |  |  |  |  |  |  |  |
| 80189601ZZ |  | INSTALL GUAGE TO MONITOR BEARING #11 VACUUM | 4.67d | 2011-05-18 08:00 | 2011-05-24 14:24 |  | 34.35d |  |  | Instrumentation Engineer [9.6 h] | 700.8 | I410 | IC001 | 0117 | 0A | P | I | ----- | 5 | ---- | - |
|  | RHR | **Residual Heat Removal** |  | 2011-05-18 08:00 | 2011-05-25 11:12 |  |  |  |  |  |  |  |  |  |  |  |  |  |  |  |  |
| 70332500ZZ |  | PM FI-985, 32 RHR PUMP INDIVIDUAL RECIRCULATION | 0.5d | 2011-05-18 08:00 | 2011-05-18 12:48 |  | 33.75d | 0d | 2S,7-19 | Instrumentation Engineer [4.8 h] | 350.4 | I410 | ICJB5 | 0138 | 0B | G | R | ----- | 5 | YY-- | - |
| 70332400ZZ |  | PM FI-984, 31 RHR PUMP INDIVIDUAL RECIRCULATION | 4.9d | 2011-05-18 12:48 | 2011-05-25 11:12 | 70332500ZZ | 33.75d |  | 2S,7-19 | Instrumentation Engineer [9.6 h] | 700.8 | I410 | ICJB5 | 0138 | 0B | G | R | ----- | 5 | YY-- | - |
|  | SW | **Service Water** |  | 2011-05-18 08:00 | 2011-05-18 14:00 |  |  |  |  |  |  |  |  |  |  |  |  |  |  |  |  |
| 60354002ZZ |  | REPLACE SWN-TCV-1113 VALVE, STEAM PACKING LEAK | 0.62d | 2011-05-18 08:00 | 2011-05-18 14:00 |  | 38.4d |  | 12S,19-7 | Operations Test Group [6 h] | 480 | I310 | MM001 | 0151 | 0A | X | I | ZCSD | 5 | Y--- | - |
|  | SI | **Safety Injection/Recirculation** |  | 2011-05-18 08:00 | 2011-05-19 15:36 |  |  |  |  |  |  |  |  |  |  |  |  |  |  |  |  |
| 60047200ZZ |  | REPAIR BROKEN SEAL TIGHT ON FT-926A LOOP 3 FLOW | 0.62d | 2011-05-18 08:00 | 2011-05-18 14:00 |  | 12d | 0d |  | Instrumentation Engineer [6 h]; Hydroblaster [6 h] | 978 | I510 | EM001 | 0169 | 0B | A | R | ZSU | 5 | YY-- | - |
| 70071200ZZ |  | REPLACE DUST CAP ON SI-MOV-843 (MO) | 0.5d | 2011-05-18 08:00 | 2011-05-18 12:48 |  | 38.55d |  |  | Instrumentation Engineer [1.2 h] | 87.6 | I510 | EM001 | 0169 | 0A | A | R | ZRCHU | 5 | YYY- | - |
| OPS980017H |  | HANG SAFETY TAG (PTO) FOR BIT HEADER | 0.15d | 2011-05-18 08:00 | 2011-05-18 09:12 |  | 39d |  |  | Operations Test Group [1.2 h] | 96 | I210 | OP001 | 0169 | -- | - | - | ----- | 5 | ---- | - |
| OPS980017R |  | REMOVE SAFETY TAG (PTO) FOR BIT HEADER | 0.15d | 2011-05-18 08:00 | 2011-05-18 09:12 |  | 39d |  |  | Operations Test Group [1.2 h] | 96 | I210 | OP001 | 0169 | -- | - | - | ----- | 5 | ---- | - |
| OPS980032H |  | HANG SAFETY TAG (PTO) FOR 31 ACCUMULATOR CALS | 0.15d | 2011-05-18 08:00 | 2011-05-18 09:12 |  | 39d |  |  | Operations Test Group [1.2 h] | 96 | I210 | OP001 | 0169 | -- | - | - | ----- | 5 | ---- | - |
| OPS980032R |  | REMOVE SAFETY TAG (PTO) AFTER 31 ACCUMULATOR | 0.15d | 2011-05-18 08:00 | 2011-05-18 09:12 |  | 39d |  |  | Operations Test Group [1.2 h] | 96 | I210 | OP001 | 0169 | -- | - | - | ----- | 5 | ---- | - |
| OPS980033H |  | HANG SAFETY TAG (PTO) FOR 32 ACCUMULATOR CALS | 0.15d | 2011-05-18 08:00 | 2011-05-18 09:12 |  | 39d |  |  | Operations Test Group [1.2 h] | 96 | I210 | OP001 | 0169 | -- | - | - | ----- | 5 | ---- | - |
| OPS980033R |  | REMOVE SAFETY TAG (PTO) AFTER 32 ACCUMULATOR | 0.15d | 2011-05-18 08:00 | 2011-05-18 09:12 |  | 39d |  |  | Operations Test Group [1.2 h] | 96 | I210 | OP001 | 0169 | -- | - | - | ----- | 5 | ---- | - |
| OPS980034H |  | HANG SAFETY TAG (PTO) FOR 33 ACCUMULATOR CALS | 0.15d | 2011-05-18 08:00 | 2011-05-18 09:12 |  | 39d |  |  | Operations Test Group [1.2 h] | 96 | I210 | OP001 | 0169 | -- | - | - | ----- | 5 | ---- | - |
| OPS980034R |  | REMOVE SAFETY TAG (PTO) AFTER 33 ACCUMULATOR | 0.15d | 2011-05-18 08:00 | 2011-05-18 09:12 |  | 39d |  |  | Operations Test Group [1.2 h] | 96 | NOLAN |  | 0169 |  |  |  |  |  |  |  |
| 60047201ZZ |  | RETEST FT-926A, SAFETY INJECTION LOOP 3 FLOW | 1.2d | 2011-05-18 14:00 | 2011-05-19 15:36 | 60047200ZZ | 12d | 1.65d |  | Instrumentation Engineer [9.6 h] | 700.8 | I410 | IC001 | 0169 | 0B | T | I | ----- | 5 | ---- | - |

| ID | WBS | Activity | Type | Duration | Start | Finish | Predecessors | Total float | Free float | Resources | Cost | Responsibility | Crew | Subs | Threatening Priority | Action | Status | Mode | Outage | PPES Support | Crane Use |
| --- | --- | --- | --- | --- | --- | --- | --- | --- | --- | --- | --- | --- | --- | --- | --- | --- | --- | --- | --- | --- | --- |
|  | VCB | **Vapor Containment Building** |  |  | 2011-05-27 15:36 | 2011-05-30 10:00 |  |  |  |  |  |  |  |  |  |  |  |  |  |  |  |
| FO30013 |  | PERFORM INITIAL CONTAINMENT RADIATION SURVEY |  | 0.42d | 2011-05-27 15:36 | 2011-05-30 10:00 | FO30002 | 30.9d |  | Operations Test Group [2.4 h] | 192 | I610 | HP001 | 0209 | 0A | - | - | ----- | 5 | ---- | - |
|  | PSU | **Plant Start Up** |  |  | 2011-05-23 12:48 | 2011-07-12 09:12 |  |  |  |  |  |  |  |  |  |  |  |  |  |  |  |
| FO49.4CSD |  | SIGNOFF BY MANAGERS FOR COLD SHUTDOWN AP 9.4 |  | 0.12d | 2011-05-23 12:48 | 2011-05-23 14:00 | 60047200ZZ, OPS980031R, 60047201ZZ, 80161701ZZ | 10.35d | 0d | Instrumentation Engineer [1.2 h] | 87.6 | I110 | AM001 | 1000 | 0A | - | - | ----- | 5 | ---- | - |
| FO50012 |  | MANAGEMENT APPROVAL TO EXCEED COLD SHUTDOWN |  | 0.15d | 2011-05-23 14:00 | 2011-05-23 15:12 | FO49.4CSD | 10.35d |  | Operations Test Group [1.2 h] | 96 | I110 | AM001 | 1000 | 0A | - | - | ----- | 5 | ---- | - |
| FO10017 |  | ESTABLISH H2 TO MAIN TURNINE GENERATOR |  | 1.82d | 2011-05-24 14:24 | 2011-05-26 12:48 | FO20010 | 10.8d | 0d | Operations Test Group [14.4 h] | 1,152 | I210 | OP001 | 1000 | 0A | - | - | ----- | 5 | ---- | - |
| FO50026 |  | PLACE ROD CONTROL SYS IN SERVICE PER SOP-RC-1 |  | 0.15d | 2011-05-30 10:00 | 2011-05-30 11:12 | FO30004 | 17.05d |  | Operations Test Group [1.2 h] | 96 | I210 | OP001 | 1000 | 0A | - | - | ----- | 5 | ---- | - |
| FO50013 |  | REMOVE RHR FROM SERVICE, 3PT-CS04 |  | 0.47d | 2011-06-07 10:00 | 2011-06-07 14:48 | FO50012, FO40007 | 0d |  | Operations Test Group [4.8 h]; Field Engineer [4.8 h] | 753.6 | I210 | OP001 | 1000 | 0A | - | - | ----- | 5 | ---- | - |
| FO50014 |  | RAISE RCS PRESSURE 400-1000 |  | 1.8d | 2011-06-07 14:48 | 2011-06-09 13:12 | FO50013 | 0d |  | Operations Test Group [14.4 h]; Field Engineer [14.4 h] | 2,260.8 | I210 | OP001 | 1000 | 0A | - | - | ----- | 5 | ---- | - |
| FO50015 |  | HEATUP RCS TO 335-345 DEGREES |  | 0.15d | 2011-06-09 13:12 | 2011-06-09 14:24 | FO50014 | 0d |  | Operations Test Group [1.2 h]; Field Engineer [1.2 h] | 188.4 | I210 | OP001 | 1000 | 0A | - | - | ----- | 5 | ---- | - |
| FO50016 |  | PRESSURIZE SI ACCUMULATORS |  | 0.72d | 2011-06-09 14:24 | 2011-06-10 11:12 | FO50015 | 0d |  | Operations Test Group [4.8 h]; Field Engineer [4.8 h] | 753.6 | I210 | OP001 | 1000 | 0A | - | - | ----- | 5 | ---- | - |
| FO50017 |  | RCS TEMP GREATER THAN 350 DEGREES (MODE 3 ENTRY) |  | 1.1d | 2011-06-10 11:12 | 2011-06-13 12:48 | FO50016, FO10017 | 0d |  | Operations Test Group [9.6 h]; Field Engineer [9.6 h] | 1,507.2 | I210 | OP001 | 1000 | 0A | - | - | ----- | 5 | ---- | - |
| FO50018 |  | HEATUP RCS TO 360-375 DEGREES |  | 0.12d | 2011-06-13 12:48 | 2011-06-13 14:00 | FO50017 | 0d |  | Operations Test Group [1.2 h]; Field Engineer [1.2 h] | 188.4 | I210 | OP001 | 1000 | 0A | - | - | ----- | 5 | ---- | - |
| FO50019 |  | RAISE RCS PRESSURE TO 1800 PSI |  | 0.72d | 2011-06-13 14:00 | 2011-06-14 10:48 | FO50018 | 0d |  | Operations Test Group [2.4 h]; Field Engineer [4.8 h] | 561.6 | I210 | OP001 | 1000 | 0A | - | - | ----- | 5 | ---- | - |
| FO50020 |  | HEATUP RCS TO 390-410 DEGREES |  | 0.47d | 2011-06-14 10:48 | 2011-06-14 15:36 | FO50019 | 0d |  | Operations Test Group [4.8 h] | 384 | I210 | OP001 | 1000 | 0A | - | - | ----- | 5 | ---- | - |
| FO50021 |  | HEATUP RCS TO 440-460 DEGREES |  | 0.28d | 2011-06-14 15:36 | 2011-06-15 08:48 | FO50020 | 0d |  | Operations Test Group [1.2 h] | 96 | I210 | OP001 | 1000 | 0A | - | - | ----- | 5 | ---- | - |
| FO50023 |  | VERIFY RCS ACTIVITY IN SPEC |  | 0.15d | 2011-06-15 08:48 | 2011-06-15 10:00 | FO50021 | 0d |  | Operations Test Group [1.2 h] | 96 | I210 | OP001 | 1000 | 0A | - | - | ----- | 5 | ---- | - |
| FO50022 |  | RCS AT OPERATING TEMPERATURE | milestone | 0d | 2011-06-15 10:00 | 2011-06-15 10:00 | FO50023, FO60026 (other project) SS | 0d |  |  |  | I210 | OP001 | 1000 | 0A | - | - | ----- | 5 | ---- | - |
| FO50024 |  | CLOSE-OUT CONTAINMENT PRIOR TO CRITICALITY |  | 0.15d | 2011-06-15 10:00 | 2011-06-15 11:12 | FO50022 | 5.17d | 0d | Operations Test Group [1.2 h] | 96 | I210 | OP001 | 1000 | 0A | - | - | ----- | 5 | ---- | - |
| FO50025 |  | PFM-49, SAT FOR CRITICALITY |  | 0.1d | 2011-06-15 11:12 | 2011-06-15 12:24 | FO50024 | 5.17d |  | Operations Test Group [1.2 h] | 96 | I210 | OP001 | 1000 | 0A | - | - | ----- | 5 | ---- | - |
| FO50027 |  | RCS AT OPERATING PRESSURE & TEMPERATURE |  | 1.2d | 2011-06-21 10:00 | 2011-06-22 11:36 | FO50022 FS+4d | 0d |  | Operations Test Group [9.6 h] | 768 | I210 | OP001 | 1000 | 0A | - | - | ----- | 5 | ---- | - |
| FO50028 |  | CLOSE REACTOR PROTECTION SYSTEM TRIP BREAKERS |  | 0.05d | 2011-06-22 11:36 | 2011-06-22 12:48 | FO50027, FO50026 | 0d |  | Operations Test Group [1.2 h] | 96 | I210 | OP001 | 1000 | 0A | - | - | ----- | 5 | ---- | - |
| FO60001 |  | EXIT POP-1.1 & ENTER POP-1.2, REACTOR START-UP |  | 1.2d | 2011-06-22 13:48 | 2011-06-23 15:24 | FO50025, FO69.4CRIT | 0d |  | Operations Test Group [9.6 h] | 768 | I210 | OP001 | 1000 | 0A | - | - | ----- | 5 | ---- | - |
| FO60002 |  | ADJUST BORON FOR CRITICALITY PER POP-1.2 |  | 0.42d | 2011-06-23 15:24 | 2011-06-24 09:48 | FO60001 | 0d |  | Operations Test Group [2.4 h] | 192 | I210 | OP001 | 1000 | 0A | - | - | ----- | 5 | ---- | - |
| FO60003 |  | WITHDRAW SHUTDOWN RODS PER POP-1.2 |  | 0.15d | 2011-06-24 09:48 | 2011-06-24 11:00 | FO60002 | 0d |  | Operations Test Group [1.2 h] | 96 | I210 | OP001 | 1000 | 0A | - | - | ----- | 5 | ---- | - |
| FO60004 |  | WITHDRAW CONTROL BANK RODS PER POP-1.2 |  | 0.12d | 2011-06-24 11:00 | 2011-06-24 12:12 | FO60003 | 0d |  | Operations Test Group [1.2 h] | 96 | I210 | OP001 | 1000 | 0A | - | - | ----- | 5 | ---- | - |
| FO60005 |  | VERIFY RCS CHEMISTRY IS IN SPEC PER RCS-6 |  | 0.35d | 2011-06-24 12:12 | 2011-06-24 15:48 | FO60004 | 0d |  | Operations Test Group [3.6 h] | 288 | I210 | OP001 | 1000 | 0A | - | - | ----- | 5 | ---- | - |
| FO60006 |  | RX CRITICAL (MODE 2 ENTRY) EXIT POP-1.2 | milestone | 0d | 2011-06-24 15:48 | 2011-06-24 15:48 | FO60005, FO69.4SYNC (other project) SS | 0d |  |  |  | I210 | OP001 | 1000 | 0A | - | - | ----- | 5 | ---- | - |
| FO60007 |  | OPEN MAIN STEAM ISOLATION VALVES | milestone | 0d | 2011-06-24 15:48 | 2011-06-24 15:48 | FO60006 | 3.45d | 0d |  |  | I210 | OP001 | 1000 | 0A | - | - | ----- | 5 | ---- | - |
| FO60008 |  | VERIFY RCS CHEMISTRY IN SPEC PER SOP-RCS-6 |  | 0.28d | 2011-06-24 15:48 | 2011-06-27 09:00 | FO60006 | 4.92d | 0d | Operations Test Group [1.2 h] | 96 | I210 | OP001 | 1000 | 0A | - | - | ----- | 5 | ---- | - |
| FO60009 |  | DRAW VACUUM IN MAIN CONDENSER USING MAIN STEAM |  | 0.28d | 2011-06-24 15:48 | 2011-06-27 09:00 | 70175504ZZ, FO60007 | 3.45d | 0d | Operations Test Group [1.2 h] | 96 | I210 | OP001 | 1000 | 0A | - | - | ----- | 5 | ---- | - |
| FO60010 |  | HEAT UP MAIN TURBINE GENERATOR |  | 1.32d | 2011-06-24 15:48 | 2011-06-28 09:24 | FO60006 | 2.55d | 0d | Operations Test Group [9.6 h] | 768 | I210 | OP001 | 1000 | 0A | - | - | ----- | 5 | ---- | - |
| FO60011 |  | HOLD FOR CHEMISTRY AT 0-2% POWER |  | 1.62d | 2011-06-24 15:48 | 2011-06-28 11:48 | FO60006 | 0d |  | Operations Test Group [12 h] | 960 | I210 | OP001 | 1000 | 0A | - | - | ----- | 5 | ---- | - |
| FO60013 |  | INCREASE REACTOR POWER TO 2-5% (MODE 1 ENTRY) |  | 1.62d | 2011-06-24 15:48 | 2011-06-28 11:48 | FO60006 | 0d |  | Operations Test Group [12 h] | 960 | I210 | OP001 | 1000 | 0A | - | - | ----- | 5 | ---- | - |
| FO60012 |  | VERIFY STEAM GENERATOR CHEMISTRY IS IN SPEC |  | 1.2d | 2011-06-27 09:00 | 2011-06-28 10:36 | FO60008 | 4.92d |  | Operations Test Group [9.6 h] | 768 | I210 | OP001 | 1000 | 0A | - | - | ----- | 5 | ---- | - |
| FO60015 |  | BRING CONDENSATE OXYGEN INTO SPEC FOR MAIN |  | 1.2d | 2011-06-27 09:00 | 2011-06-28 10:36 | FO60009 | 3.45d |  | Operations Test Group [9.6 h] | 768 | I210 | OP001 | 1000 | 0A | - | - | ----- | 5 | ---- | - |
| FO60014 |  | INCREASE REACTOR POWER TO 5-10% |  | 3.17d | 2011-06-28 11:48 | 2011-07-01 14:12 | FO60011, FO60013 | 0d |  | Operations Test Group [26.4 h] | 2,112 | I210 | OP001 | 1000 | 0A | - | - | ----- | 5 | ---- | - |
| FO60016 |  | SWAP FROM AUX FEEDWATER TO MAIN FEEDWATER |  | 0.15d | 2011-07-01 14:12 | 2011-07-01 15:24 | FO60014, FO60015 | 0d |  | Operations Test Group [1.2 h] | 96 | I210 | OP001 | 1000 | 0A | - | - | ----- | 5 | ---- | - |
| FO60019 |  | SYNC TURBINE TO THE GRID / BREAKER CLOSED |  | 0.15d | 2011-07-05 10:00 | 2011-07-05 11:12 | FO60017, FO60012, FO69.4SYNC | 0d |  | Operations Test Group [1.2 h] | 96 | I210 | OP001 | 1000 | 0A | - | - | ----- | 5 | ---- | - |
| FO60020 |  | RAISE RX POWER FROM 15% TO 20% |  | 0.1d | 2011-07-05 11:12 | 2011-07-05 12:24 | FO60019 | 0d |  | Operations Test Group [1.2 h] | 96 | I210 | OP001 | 1000 | 0A | - | - | ----- | 5 | ---- | - |
| FO60021 |  | SWAP FEEDWATER FROM MANUAL TO AUTOMATIC |  | 0.1d | 2011-07-06 11:12 | 2011-07-06 12:24 | FO60020 SS+1d | 0d |  | Operations Test Group [1.2 h]; Electrician [1.2 h] | 210 | I210 | OP001 | 1000 | 0A | - | - | ----- | 5 | ---- | - |
| FO60023 |  | RAISE RX POWER FROM 25% TO 30% |  | 1.12d | 2011-07-06 12:24 | 2011-07-07 14:00 | FO60021, FO60020 | 0d |  | Operations Test Group [9.6 h]; Electrician [9.6 h] | 1,680 | I210 | OP001 | 1000 | 0A | - | - | ----- | 5 | ---- | - |
| FO60024 |  | PERFORM SOP-RPC-6, REACTOR THERMAL PWR CALC |  | 1.2d | 2011-07-07 14:00 | 2011-07-08 15:36 | FO60023 | 0d |  | Operations Test Group [9.6 h]; Electrician [9.6 h] | 1,680 | I210 | OP001 | 1000 | 0A | - | - | ----- | 5 | ---- | - |
| FO60025 |  | INCREASE RX POWER FROM 30% TO 100% |  | 1.32d | 2011-07-08 15:36 | 2011-07-12 09:12 | FO60024 | 0d |  | Operations Test Group [9.6 h]; Electrician [9.6 h] | 1,680 | I210 | OP001 | 1000 | 0A | - | - | ----- | 5 | ---- | - |

| ID | WBS | Activity | Type | Duration | Start | Finish | Predecessors | Total float | Responsibility | Crew | Subs | Threatening Priority | Action | Status | Mode | Outage | PPES Support | Crane Use |
| --- | --- | --- | --- | --- | --- | --- | --- | --- | --- | --- | --- | --- | --- | --- | --- | --- | --- | --- |
|  | OL | **On Line** |  |  | 2011-06-22 12:48 | 2011-07-12 09:12 |  |  |  |  |  |  |  |  |  |  |  |  |
| FO69.4CRIT |  | SIGNOFF BY MANAGERS FOR RX CRITICAL AP 9.4 |  | 0.12d | 2011-06-22 12:48 | 2011-06-22 13:48 | FO10017, 80161700ZZ, 80162501ZZ, FO20006B, FO50028 | 0d | I110 | AM001 | 1000 | 0A | - | - | ----- | 5 | ---- | - |
| FO69.4SYNC |  | SIGNOFF BY MANAGERS FOR SYNC TO GRID AP 9.4 |  | 0.12d | 2011-07-05 09:00 | 2011-07-05 10:00 | FO60017 | 0d | I110 | AM001 | 1000 | 0A | - | - | ----- | 5 | ---- | - |
| FO60026 |  | UNIT AT 100% POWER | milestone | 0d | 2011-07-12 09:12 | 2011-07-12 09:12 | FO60025 | 0d | I210 | OP001 | 1000 | 0A | - | - | ----- | 5 | ---- | - |

## Activity codes

| Code | Value | Meaning |
| --- | --- | --- |
| Action | - | Action code not applicable |
| Action | A | Corrective Maintenance |
| Action | E | Predictive Maintenance |
| Action | G | Scheduled Preventive Maintenance |
| Action | P | Other |
| Action | T | Post Work Testing |
| Action | X | Modifications |
| Action | Y | Post-Modification Testing |
| Crane Use | - | Crane not applicable |
| Crew | AM001 | MGM Review |
| Crew | EM001 | Elect Maint - Global Crew |
| Crew | HP001 | Health Physics - Global Crew |
| Crew | IC001 | Departmental - Global Crew |
| Crew | ICJB1 | Contractors Days |
| Crew | ICJB5 | IC Days - Global |
| Crew | MM001 | (MECH/ELEC) - Global Crew |
| Crew | MMBP1 | Bill Petrosi |
| Crew | MMFL1 | Fausto Lord |
| Crew | MMJA1 | Jack Arcate |
| Crew | OP001 | Operations - Global Crew |
| Crew | OPTG1 | Operations Test Group |
| Mode | ----- | Mode not applicable |
| Mode | ZCSD | Cold Shutdown |
| Mode | ZMCVC | Main Condenser Vacuum Established |
| Mode | ZMSIV | MSIV'S Closed |
| Mode | ZRCHU | RCS < 350 F |
| Mode | ZRXCR | Reactor Critical |
| Mode | ZSU | RCS > 350 F |
| Mode | ZTBSY | Turbine Sync |
| Outage | 5 | FO Forced Outage |
| PPES Support | ---- | No Rome Indicators or Not Applicable |
| PPES Support | N--- | No PTO Required |
| PPES Support | Y--- | PTO Required |
| PPES Support | YY-- | PTO and RWP Required |
| PPES Support | YYY- | PTO, RWP and Scaffolding Required |
| Responsibility | EVANS | Tim Evans |
| Responsibility | FOLEY | Meg Foley |
| Responsibility | I110 | Site Administration |
| Responsibility | I210 | Operations |
| Responsibility | I310 | Mechanical Maint |
| Responsibility | I410 | Instrument & Control |
| Responsibility | I510 | Electrical Maint |
| Responsibility | I610 | Health Physics |
| Responsibility | MASON | Andy Mason |
| Responsibility | MILLS | Tom Mills |
| Responsibility | NOLAN | Joe Nolan |
| Responsibility | VENDR | Vendor |
| Status | - | Stat not applicable |
| Status | H | Hold |
| Status | I | PID Approved - Planning in Progress |
| Status | R | Planning Complete - Ready for Work |
| Status | S | Planning Complete - Awaiting Materials |
| Subs | 0034 | Chemical & Volumn Control - General |
| Subs | 0038 | 138 KV |
| Subs | 0043 | 6.9 KV |
| Subs | 0045 | Instrument Bus - AC Power |
| Subs | 0076 | Main Feedwater Pump & Services |
| Subs | 0077 | Main Feedwater |
| Subs | 0083 | Heater Drain, MSR Drains/Vents -General |
| Subs | 0108 | Main Steam - General |
| Subs | 0109 | Extraction Steam |
| Subs | 0112 | Low Pressure Steam Dump |
| Subs | 0114 | Main Turbine / Generator - General |
| Subs | 0116 | Main Generator - Seal Oil |
| Subs | 0117 | Generator Excitation, Control & Instrumetation |
| Subs | 0130 | Rod Control Drive |
| Subs | 0132 | Reactor Coolent - General |
| Subs | 0136 | Pressurizer |
| Subs | 0138 | Residual Heat Removal - General |
| Subs | 0151 | Service Water |
| Subs | 0169 | Safety Injection/Recirculation - General |
| Subs | 0209 | Vapor Containment Building |
| Subs | 0999 | Plant Shutdown |
| Subs | 1000 | Plant Startup Sequence |
| Threatening Priority | -- | Priority not applicable |
| Threatening Priority | 0A | Outage Priority A (Must Do) |
| Threatening Priority | 0B | Outage Priority B |

# Sunset Gorge - Routine Maintenance Work

Schedule from Primavera P6, 2010-12-27 to 2010-12-31, data date 2010-12-31, A marks actual dates.

## Schedule

| ID | WBS | Activity | Type | Duration | Start | Finish | Complete | Planned start | Planned finish |
| --- | --- | --- | --- | --- | --- | --- | --- | --- | --- |
|  | FO | **Forced Outage** |  |  | 2010-12-27 | 2010-12-31 |  |  |  |
|  | PSD | **Plant Shutdown** |  |  |  |  |  |  |  |
|  | CVC | **Chemical and Volume Control** |  |  |  |  |  |  |  |
|  | PS | **Power Systems** |  |  |  |  |  |  |  |
|  | 138KV | **138 KV** |  |  |  |  |  |  |  |
|  | 69KV | **69 KV** |  |  |  |  |  |  |  |
|  | IB | **Instrument Bus** |  |  |  |  |  |  |  |
|  | FW | **Feedwater** |  |  |  |  |  |  |  |
|  | MFPS | **Main Feedwater Pump and Service** |  |  |  |  |  |  |  |
|  | MF | **Main Feedwater** |  |  |  |  |  |  |  |
|  | HD | **Heater Drain, MSR Drains/Vents** |  |  |  |  |  |  |  |
|  | Steam | **Steam** |  |  |  |  |  |  |  |
|  | MS | **Main Steam** |  |  |  |  |  |  |  |
|  | ES | **Extraction Steam** |  |  |  |  |  |  |  |
|  | LPS | **Low Pressure Steam Dump** |  |  |  |  |  |  |  |
|  | MT | **Main Turbine** |  |  |  |  |  |  |  |
|  | Reactor | **Reactor** |  |  |  |  |  |  |  |
|  | RCD | **Rod Control Drive** |  |  |  |  |  |  |  |
|  | RC | **Reactor Coolent** |  |  |  |  |  |  |  |
|  | P | **Pressurizer** |  |  |  |  |  |  |  |
|  | Gen | **Generator** |  |  |  |  |  |  |  |
|  | MG | **Main Generator** |  |  |  |  |  |  |  |
|  | GECI | **Generator Excitation, Control & Instrumentation** |  |  |  |  |  |  |  |
|  | RHR | **Residual Heat Removal** |  |  |  |  |  |  |  |
|  | SW | **Service Water** |  |  |  |  |  |  |  |
|  | SI | **Safety Injection/Recirculation** |  |  |  |  |  |  |  |
|  | VCB | **Vapor Containment Building** |  |  |  |  |  |  |  |
|  | PSU | **Plant Start Up** |  |  |  |  |  |  |  |
|  | OL | **On Line** |  |  | 2010-12-27 | 2010-12-31 |  |  |  |
| FO69.4SYNC |  | SIGNOFF BY MANAGERS FOR SYNC TO GRID AP 9.4 | milestone | 0d | 2010-12-27 A | 2010-12-27 A | 100% | 2010-12-24 | 2010-12-24 |
| FO60026 |  | UNIT AT 100% POWER | milestone | 0d | 2010-12-31 A | 2010-12-31 A | 100% |  |  |

# Baytown, TX - Offline Maintenance Work

Schedule from Primavera P6, 2011-08-23 to 2011-08-23, data date 2011-08-01.
Units 1 and 2 were taken off line and maintenance is on schedule. There / have been no safety issues and contractors are performing at expected / levels. Our new statusing process has allowed us to get status and provide / the work list out to the next shift within our time constraints. / Project execution looks on track and the retrofit of the new scrubbers / this week is critical to the success of the outage. Completing this / project on time will allows us to hit our production numbers for the / fourth consecutive quarter.

## Schedule

| ID | WBS | Activity | Type | Duration | Start | Finish | Predecessors | Total float |
| --- | --- | --- | --- | --- | --- | --- | --- | --- |
|  | FO | **Forced Outage** |  |  | 2011-08-23 | 2011-08-23 |  |  |
|  | PSD | **Plant Shutdown** |  |  |  |  |  |  |
|  | CVC | **Chemical and Volume Control** |  |  |  |  |  |  |
|  | PS | **Power Systems** |  |  |  |  |  |  |
|  | 138KV | **138 KV** |  |  |  |  |  |  |
|  | 69KV | **69 KV** |  |  |  |  |  |  |
|  | IB | **Instrument Bus** |  |  |  |  |  |  |
|  | FW | **Feedwater** |  |  |  |  |  |  |
|  | MFPS | **Main Feedwater Pump and Service** |  |  |  |  |  |  |
|  | MF | **Main Feedwater** |  |  |  |  |  |  |
|  | HD | **Heater Drain, MSR Drains/Vents** |  |  |  |  |  |  |
|  | Steam | **Steam** |  |  |  |  |  |  |
|  | MS | **Main Steam** |  |  |  |  |  |  |
|  | ES | **Extraction Steam** |  |  |  |  |  |  |
|  | LPS | **Low Pressure Steam Dump** |  |  |  |  |  |  |
|  | MT | **Main Turbine** |  |  |  |  |  |  |
|  | Reactor | **Reactor** |  |  |  |  |  |  |
|  | RCD | **Rod Control Drive** |  |  |  |  |  |  |
|  | RC | **Reactor Coolent** |  |  |  |  |  |  |
|  | P | **Pressurizer** |  |  |  |  |  |  |
|  | Gen | **Generator** |  |  |  |  |  |  |
|  | MG | **Main Generator** |  |  |  |  |  |  |
|  | GECI | **Generator Excitation, Control & Instrumentation** |  |  |  |  |  |  |
|  | RHR | **Residual Heat Removal** |  |  |  |  |  |  |
|  | SW | **Service Water** |  |  |  |  |  |  |
|  | SI | **Safety Injection/Recirculation** |  |  |  |  |  |  |
|  | VCB | **Vapor Containment Building** |  |  |  |  |  |  |
|  | PSU | **Plant Start Up** |  |  | 2011-08-23 | 2011-08-23 |  |  |
| FO50022 |  | RCS AT OPERATING TEMPERATURE | milestone | 0d | 2011-08-23 | 2011-08-23 | FO60026 (other project) SS | 0d |

| WBS | Activity |
| --- | --- |
| OL | **On Line** |
